# 净速项目-时间规划

How a schedule from MS Project changed from version to version. A marks actual dates.

## Version 1 (saved 2020-04-27)

Note of the change: 修改上传

| ID | WBS | Task | Duration | Start | Finish | Predecessors |
| --- | --- | --- | --- | --- | --- | --- |
| 1 | 1 | **启动** | 5d | 2020-03-02 | 2020-03-06 |  |
| 2 |  | 组建核心团队 | 1d | 2020-03-02 | 2020-03-02 |  |
| 3 |  | 干系人分析 | 1d | 2020-03-03 | 2020-03-03 |  |
| 4 |  | 里程碑进度规划 | 1d | 2020-03-04 | 2020-03-04 |  |
| 5 |  | 制定项目章程 | 1d | 2020-03-05 | 2020-03-05 | 2, 3, 4 |
| 6 |  | 项目启动大会 | 1d | 2020-03-06 | 2020-03-06 | 5 |
| 7 | 2 | **规划** | 33d | 2020-03-09 | 2020-04-22 |  |
| 8 | 2.1 | **规划范围** | 5d | 2020-03-09 | 2020-03-13 |  |
| 9 |  | 制定范围管理计划 | 1d | 2020-03-09 | 2020-03-09 | 6 |
| 10 |  | 收集需求 | 1d | 2020-03-10 | 2020-03-10 | 9 |
| 11 |  | 定义范围 | 1d | 2020-03-11 | 2020-03-11 | 10 |
| 12 |  | 创建工作分解结构wbs | 1d | 2020-03-12 | 2020-03-12 | 11 |
| 13 |  | 形成范围基准 | 1d | 2020-03-13 | 2020-03-13 | 12 |
| 14 | 2.2 | **规划时间** | 7d | 2020-03-16 | 2020-03-24 |  |
| 15 |  | 排列工作包顺序 | 1d | 2020-03-16 | 2020-03-16 | 13 |
| 16 |  | 估算资源 | 2d | 2020-03-17 | 2020-03-18 | 15 |
| 17 |  | 估算持续时间 | 2d | 2020-03-19 | 2020-03-20 | 16 |
| 18 |  | 制定进度计划 | 1d | 2020-03-23 | 2020-03-23 | 17 |
| 19 |  | 形成进度基准 | 1d | 2020-03-24 | 2020-03-24 | 18 |
| 20 | 2.3 | **规划成本** | 6d | 2020-03-25 | 2020-04-01 |  |
| 21 |  | 项目成本估算 | 3d | 2020-03-25 | 2020-03-27 | 19 |
| 22 |  | 项目预算 | 2d | 2020-03-30 | 2020-03-31 | 21 |
| 23 |  | 形成范围基准 | 1d | 2020-04-01 | 2020-04-01 | 22 |
| 24 | 2.4 | **规划质量** | 8d | 2020-03-30 | 2020-04-08 |  |
| 25 |  | 制定测试计划 | 2d | 2020-03-31 | 2020-04-01 | 13 |
| 26 |  | 编写测试用例 | 4d | 2020-04-02 | 2020-04-07 | 25 |
| 27 | 2.5 | **规划人力资源** | 2d | 2020-04-09 | 2020-04-10 |  |
| 28 |  | 制定人员资源计划 | 1d | 2020-04-09 | 2020-04-09 | 16 |
| 29 |  | 制定人员配备管理计划 | 1d | 2020-04-10 | 2020-04-10 | 28 |
| 30 | 2.6 | **规划沟通** | 1d | 2020-04-13 | 2020-04-13 |  |
| 31 |  | 制定沟通管理计划 | 1d | 2020-04-13 | 2020-04-13 | 29 |
| 32 | 2.7 | **规划风险** | 3d | 2020-04-14 | 2020-04-16 |  |
| 33 |  | 识别风险 | 1d | 2020-04-14 | 2020-04-14 | 14, 20, 24, 27 |
| 34 |  | 风险预估 | 1d | 2020-04-15 | 2020-04-15 | 33 |
| 35 |  | 制定风险登记册 | 1d | 2020-04-16 | 2020-04-16 | 34 |
| 36 |  | 规划整合 | 1d | 2020-04-17 | 2020-04-17 | 35 |
| 37 | 3 | **执行与监控** | 57d | 2020-04-27 | 2020-07-14 |  |
| 38 |  | 组建项目团队 | 1d | 2020-04-27 | 2020-04-27 | 6 |
| 39 | 3.2 | **项目执行** | 28d | 2020-04-28 | 2020-06-04 |  |
| 40 | 3.2.1 | **用户主页模块** | 6d | 2020-04-28 | 2020-05-05 |  |
| 41 |  | 浏览主页 | 1d | 2020-04-28 | 2020-04-28 | 38 |
| 42 |  | 搜索商品优惠券 | 2d | 2020-04-29 | 2020-04-30 | 41 |
| 43 |  | 查看优惠券详情 | 1d | 2020-05-01 | 2020-05-01 | 42 |
| 44 |  | 查看佣金 | 1d | 2020-05-04 | 2020-05-04 | 43 |
| 45 |  | 个人资料配置 | 1d | 2020-05-05 | 2020-05-05 | 44 |
| 46 | 3.2.2 | **商家模块** | 6d | 2020-05-06 | 2020-05-13 |  |
| 47 |  | 注册入驻 | 1d | 2020-05-06 | 2020-05-06 | 38 |
| 48 |  | 联系管理员 | 2d | 2020-05-07 | 2020-05-08 | 47 |
| 49 |  | 设置优惠券金额与数量 | 1d | 2020-05-11 | 2020-05-11 | 48 |
| 50 |  | 支付定金 | 2d | 2020-05-12 | 2020-05-13 | 49 |
| 51 | 3.2.3 | **管理员模块** | 9d | 2020-05-11 | 2020-05-21 |  |
| 52 |  | 商家审核 | 2d | 2020-05-11 | 2020-05-12 | 38 |
| 53 |  | 发放优惠券 | 1d | 2020-05-13 | 2020-05-13 | 52 |
| 54 |  | 用户管理 | 3d | 2020-05-14 | 2020-05-18 | 53 |
| 55 |  | 统计分析 | 1d | 2020-05-19 | 2020-05-19 | 54 |
| 56 |  | 备份 | 2d | 2020-05-20 | 2020-05-21 | 55 |
| 57 | 3.2.4 | **登录注册模块** | 7d | 2020-05-22 | 2020-06-01 |  |
| 58 |  | 选择角色 | 1d | 2020-05-22 | 2020-05-22 | 38 |
| 59 |  | 注册 | 1d | 2020-05-25 | 2020-05-25 | 58 |
| 60 |  | 登录 | 1d | 2020-05-26 | 2020-05-26 | 59 |
| 61 |  | 找回密码 | 2d | 2020-05-27 | 2020-05-28 | 60 |
| 62 |  | 第三方登录(免注册) | 2d | 2020-05-29 | 2020-06-01 | 58 |
| 63 | 3.3 | **项目监控** | 4d | 2020-06-05 | 2020-06-10 |  |
| 64 |  | 各项指标评审 | 1d | 2020-06-05 | 2020-06-05 | 38 |
| 65 |  | 监控评审 | 1d | 2020-06-08 | 2020-06-08 | 64 |
| 66 |  | 变更评审 | 1d | 2020-06-09 | 2020-06-09 | 65 |
| 67 |  | 例会举行 | 1d | 2020-06-10 | 2020-06-10 | 66 |
| 68 | 3.4 | **管理干系人** | 3d | 2020-06-11 | 2020-06-15 |  |
| 69 |  | 项目信息发布 | 1d | 2020-06-11 | 2020-06-11 | 38 |
| 70 |  | 汇报监控指标 | 1d | 2020-06-12 | 2020-06-12 | 38 |

| ID | WBS | Task | Duration | Start | Finish | Predecessors |
| --- | --- | --- | --- | --- | --- | --- |
| 71 |  | 干系人交流 | 1d | 2020-06-15 | 2020-06-15 | 38 |
| 72 | 3.5 | **团队建设** | 4d | 2020-06-16 | 2020-06-19 |  |
| 73 |  | 培训 | 2d | 2020-06-16 | 2020-06-17 | 38 |
| 74 |  | 娱乐活动 | 1d | 2020-06-18 | 2020-06-18 | 38 |
| 75 |  | 沟通交流 | 1d | 2020-06-19 | 2020-06-19 | 38 |
| 76 |  | 采购 | 15d | 2020-06-22 | 2020-07-10 | 38 |
| 77 |  | 项目验收 | 2d | 2020-07-13 | 2020-07-14 | 39 |
| 78 | 4 | **收尾** | 3d | 2020-07-15 | 2020-07-17 |  |
| 79 |  | 项目终验 | 1d | 2020-07-15 | 2020-07-15 | 77 |
| 80 |  | 结束采购 | 1d | 2020-07-16 | 2020-07-16 | 77 |
| 81 |  | 项目内部收尾 | 1d | 2020-07-17 | 2020-07-17 | 77 |

## Version 2 (saved 2020-05-13)

Last finish stays 2020-07-17.

Changed:

| ID | Task | Other |
| --- | --- | --- |
| 6 | 项目启动大会 | resources 谷小雨 → 张春庆 |
| 25 | 制定测试计划 | resources 赵若曦 → 张春庆; 赵若曦 |
| 26 | 编写测试用例 | resources 赵若曦 → 张春庆; 赵若曦 |
